# 前端工作规划

Schedule from MS Project, 2016-04-18 to 2016-12-30.

## Calendars

- 标准: Mon-Fri 08:00-12:00, 13:00-17:00; Sat-Sun off. Exceptions (off unless hours are given): 2016-06-09 (端午节), 2016-06-12 08:00-12:00, 13:00-17:00 (端午调班), 2016-09-15 to 2016-09-17 (中秋节), 2016-09-18 08:00-12:00, 13:00-17:00 (中秋调班), 2016-10-01 to 2016-10-07 (国庆节), 2016-10-08 to 2016-10-09 08:00-12:00, 13:00-17:00 (国庆调班).

## Resources

| Resource |
| --- |
| Dev.Wulei |
| Dev.YingYong |
| 管理人员 |
| 分析人员 |
| Dev.WangHu |
| 陈明 |
| 邓世伟 |
| 花成 |
| 郁江 |
| 徐艳玲 |
| 雍鹏亮 |
| 陆坚 |

## Schedule

| ID | WBS | Task | Duration | Start | Finish | Predecessors | Total slack | Free slack | Constraint | Resources | Work |
| --- | --- | --- | --- | --- | --- | --- | --- | --- | --- | --- | --- |
| 1 | 1 | **热更新解决方案** | 5d | 2016-05-16 | 2016-05-20 |  |  |  |  |  | 104h |
| 2 | 1.1 | 热更新需求调研 | 1d | 2016-05-16 | 2016-05-16 |  | 160d |  | start no earlier than 2016-05-16 | 陈明 | 8h |
| 3 | 1.2 | 熟悉LuaFramework | 0.5d | 2016-05-16 | 2016-05-16 |  | 1d | 0d |  | 邓世伟 | 4h |
| 4 | 1.3 | 编辑器模式读取资源 | 0.5d | 2016-05-16 | 2016-05-16 | 3 | 1d | 0d | start no earlier than 2016-05-16 | 邓世伟 | 4h |
| 5 | 1.4 | 采用unity5的方式进行资源打包 | 0.5d | 2016-05-17 | 2016-05-17 | 4 | 1d | 0d |  | 邓世伟 | 4h |
| 6 | 1.5 | 打包规范 | 0.5d | 2016-05-17 | 2016-05-17 | 5 | 1d | 0d |  | 邓世伟 | 4h |
| 7 | 1.6 | 资源上传加入自动化构建 | 1d | 2016-05-18 | 2016-05-18 | 6 | 1d | 0d |  | 邓世伟 | 8h |
| 8 | 1.7 | 资源更新流程 | 0.5d | 2016-05-19 | 2016-05-19 | 7 | 1d | 0d |  | 邓世伟 | 4h |
| 9 | 1.8 | 资源打包规范 | 0.5d | 2016-05-19 | 2016-05-19 | 8 | 1d |  |  | 邓世伟 | 4h |
| 10 | 1.9 | Resource资源访问 | 0.25d | 2016-05-19 | 2016-05-19 | 7 | 1d | 0d | start no earlier than 2016-05-18 | 邓世伟 | 2h |
| 11 | 1.10 | Asset资源访问 | 0.25d | 2016-05-19 | 2016-05-19 | 10 | 1d | 0d |  | 邓世伟 | 2h |
| 12 | 1.11 | Assetbundle资源访问 | 0.5d | 2016-05-19 | 2016-05-19 | 11 | 1d | 0d |  | 邓世伟 | 4h |
| 13 | 1.12 | 资源访问规范 | 1d | 2016-05-20 | 2016-05-20 | 12 | 156d |  | start no earlier than 2016-05-20 | 邓世伟 | 8h |
| 14 | 1.13 | 熟悉uLua框架 | 1d | 2016-05-16 | 2016-05-16 |  | 0d |  |  | 花成 | 8h |
| 15 | 1.14 | 实现Lua界面 | 1d | 2016-05-17 | 2016-05-17 | 14 | 0d |  |  | 花成 | 8h |
| 16 | 1.15 | 编写测试例子并测试 | 1d | 2016-05-18 | 2016-05-18 | 15 | 0d |  |  | 花成 | 8h |
| 17 | 1.16 | 热更新文档 | 1d | 2016-05-19 | 2016-05-19 | 16 | 0d |  |  | 花成 | 8h |
| 18 | 1.17 | 测试例子修改 | 0.5d | 2016-05-20 | 2016-05-20 | 17 | 0d |  |  | 花成 | 4h |
| 19 | 1.18 | Lua编码规范 | 0.5d | 2016-05-20 | 2016-05-20 | 18 | 0d |  |  | 花成 | 4h |
| 20 | 1.19 | 代码文档Review | 1d | 2016-05-20 | 2016-05-20 |  | 156d |  | start no earlier than 2016-05-20 | 陈明 | 8h |
| 21 | 2 | **调试方案** | 10d | 2016-05-23 | 2016-06-03 | 1 |  |  |  |  | 162h |
| 22 | 2.1 | 集成Report插件Log | 1d | 2016-05-23 | 2016-05-23 |  | 0.5d | 0d | start no earlier than 2016-05-23 | 邓世伟 | 8h |
| 23 | 2.2 | 编写测试例子并测试 | 1d? | 2016-05-24 | 2016-05-24 | 22 | 0.5d | 0d |  | 邓世伟 | 8h |
| 24 | 2.3 | 熟悉Log4Net机制 | 0.25d? | 2016-05-25 | 2016-05-25 | 23 | 0.5d | 0d |  |  |  |
| 25 | 2.4 | 集成Log4Net插件 | 0.25d? | 2016-05-25 | 2016-05-25 | 24 | 0.5d | 0d |  | 邓世伟 | 2h |
| 26 | 2.5 | Log上传服务器 | 0.5d? | 2016-05-25 | 2016-05-25 | 25 | 0.5d | 0d |  | 邓世伟 | 4h |
| 27 | 2.6 | 研究Breakpad原理 | 0.5d? | 2016-05-26 | 2016-05-26 | 26 | 0.5d | 0d |  | 邓世伟 | 4h |
| 28 | 2.7 | Breakpad IOS版Demo | 1d? | 2016-05-26 | 2016-05-27 | 27 | 0.5d | 0d |  | 邓世伟 | 8h |
| 29 | 2.8 | Breakpad Android 环境搭建 | 1d? | 2016-05-27 | 2016-05-30 | 28 | 0.5d | 0d |  | 邓世伟 | 8h |
| 30 | 2.9 | CrashReport 上报逻辑 | 1d? | 2016-05-30 | 2016-05-31 | 29 | 0.5d | 0d |  | 邓世伟 | 8h |
| 31 | 2.10 | CrashReport 上报调试 | 1d? | 2016-05-31 | 2016-06-01 | 30 | 0.5d | 0d |  | 邓世伟 | 8h |
| 32 | 2.11 | CrashReport组件打包 | 1d? | 2016-06-01 | 2016-06-02 | 31 | 0.5d | 0d |  | 邓世伟 | 8h |
| 33 | 2.12 | CrashReport接入SDK | 1d? | 2016-06-02 | 2016-06-03 | 32 | 0.5d |  |  | 邓世伟 | 8h |
| 34 | 2.13 | Crash解决方案资料收集 | 1d? | 2016-05-23 | 2016-05-23 |  | 0d |  |  | 花成 | 8h |
| 35 | 2.14 | Android原生异常捕捉 | 1d? | 2016-05-24 | 2016-05-24 | 34 | 0d |  |  | 花成 | 8h |
| 36 | 2.15 | Android Breakpad机制 | 1d? | 2016-05-25 | 2016-05-25 | 35 | 0d |  |  | 花成 | 8h |
| 37 | 2.16 | Android BreakpadDemo | 2d | 2016-05-26 | 2016-05-27 | 36 | 0d |  |  | 花成 | 16h |
| 38 | 2.17 | Android CrashReport 上传 | 2d | 2016-05-30 | 2016-05-31 | 37 | 0d |  |  | 花成 | 16h |
| 39 | 2.18 | Android CrashReport 调试 | 1d? | 2016-06-01 | 2016-06-01 | 38 | 0d |  |  | 花成 | 8h |
| 40 | 2.19 | Android Crash打包 | 1d? | 2016-06-02 | 2016-06-02 | 39 | 0d |  |  | 花成 | 8h |
| 41 | 2.20 | Android 集成SDK | 1d? | 2016-06-03 | 2016-06-03 | 40 | 0d |  |  | 花成 | 8h |
| 42 | 2.21 | CrashReport代码Review | 1d? | 2016-06-03 | 2016-06-03 |  | 146d |  | start no earlier than 2016-06-03 | 陈明 | 8h |

| ID | WBS | Task | Duration | Start | Finish | Predecessors | Total slack | Free slack | Constraint | Resources | Work |
| --- | --- | --- | --- | --- | --- | --- | --- | --- | --- | --- | --- |
| 43 | 3 | **U3D框架** | 5d | 2016-06-12 | 2016-06-17 | 21 |  |  |  |  | 40h |
| 44 | 3.1 | 前端工作计划 | 2d | 2016-06-12 | 2016-06-13 |  | 0d |  | start no earlier than 2016-06-12 | 陈明 | 16h |
| 45 | 3.2 | 前端CodeStyle | 1d? | 2016-06-14 | 2016-06-14 | 44 | 0d |  |  | 陈明 | 8h |
| 46 | 3.3 | U3D框架 | 2d | 2016-06-15 | 2016-06-16 | 45 | 0d |  |  | 陈明 | 16h |
| 47 | 4 | **网络通用框架** | 9d | 2016-06-12 | 2016-06-22 | 21 |  |  |  |  | 116h |
| 48 | 4.1 | **系统设计** | 2d | 2016-06-12 | 2016-06-13 |  | 0d |  |  |  | 16h |
| 49 | 4.1.1 | 系统框图 | 1d | 2016-06-12 | 2016-06-12 |  | 0d |  |  | 陈明 | 8h |
| 50 | 4.1.2 | 系统设计讨论 | 1d | 2016-06-13 | 2016-06-13 | 49 | 0d |  | start no earlier than 2015-07-27 | 陈明 | 8h |
| 51 | 4.2 | **网络通信实现** | 3.5d? | 2016-06-14 | 2016-06-17 | 48 | 0.5d |  |  |  | 28h |
| 52 | 4.2.1 | 底层实现 | 1d? | 2016-06-14 | 2016-06-14 |  | 0.5d | 0d |  | 邓世伟 | 8h |
| 53 | 4.2.2 | TCP实现 | 0.5d | 2016-06-15 | 2016-06-15 | 52 | 0.5d | 0d |  | 邓世伟 | 4h |
| 54 | 4.2.3 | UDP实现 | 0.5d | 2016-06-15 | 2016-06-15 | 53 | 0.5d | 0d |  | 邓世伟 | 4h |
| 55 | 4.2.4 | Http实现 | 0.5d | 2016-06-16 | 2016-06-16 | 54 | 0.5d | 0d |  | 邓世伟 | 4h |
| 56 | 4.2.5 | 调试 | 1d? | 2016-06-16 | 2016-06-17 | 55 | 0.5d |  |  | 邓世伟 | 8h |
| 57 | 4.3 | **编解码实现** | 4d? | 2016-06-14 | 2016-06-17 | 48 | 0d |  |  |  | 32h |
| 58 | 4.3.1 | 底层实现 | 1d? | 2016-06-14 | 2016-06-14 |  | 0d |  |  | 花成 | 8h |
| 59 | 4.3.2 | PB实现 | 0.5d | 2016-06-15 | 2016-06-15 | 58 | 0d |  |  | 花成 | 4h |
| 60 | 4.3.3 | Json实现 | 0.5d | 2016-06-15 | 2016-06-15 | 59 | 0d |  |  | 花成 | 4h |
| 61 | 4.3.4 | 其他实现 | 2d | 2016-06-16 | 2016-06-17 | 60 | 0d |  |  | 花成 | 16h |
| 62 | 4.4 | **联合调试** | 2d | 2016-06-20 | 2016-06-21 | 51, 57 | 0d |  |  |  | 32h |
| 63 | 4.4.1 | 通信和编解码集成 | 1d | 2016-06-20 | 2016-06-20 |  | 0d |  |  | 邓世伟; 花成 | 16h |
| 64 | 4.4.2 | 联合调试 | 1d | 2016-06-21 | 2016-06-21 | 63 | 0d |  |  | 邓世伟; 花成 | 16h |
| 65 | 4.5 | **验收Review** | 1d | 2016-06-22 | 2016-06-22 | 62 |  |  |  |  | 8h |
| 66 | 4.5.1 | Review | 1d | 2016-06-22 | 2016-06-22 |  | 0d |  |  | 陈明 | 8h |

| ID | WBS | Task | Duration | Start | Finish | Predecessors | Total slack | Free slack | Constraint | Resources | Work |
| --- | --- | --- | --- | --- | --- | --- | --- | --- | --- | --- | --- |
| 67 | 5 | **通用数据模型** | 7d | 2016-06-21 | 2016-06-29 | 47 |  |  |  |  | 88h |
| 68 | 5.1 | **系统设计** | 1d | 2016-06-21 | 2016-06-21 |  |  |  |  |  | 8h |
| 69 | 5.1.1 | 系统框图 | 0.5d | 2016-06-21 | 2016-06-21 |  | 0.5d | 0d |  | 陈明 | 4h |
| 70 | 5.1.2 | 系统设计讨论 | 0.5d | 2016-06-21 | 2016-06-21 | 69 | 134d |  | start no earlier than 2015-07-27 | 陈明 | 4h |
| 71 | 5.2 | **实现** | 4d | 2016-06-22 | 2016-06-27 | 68 |  |  |  |  | 56h |
| 72 | 5.2.1 | 底层实现 | 1d | 2016-06-22 | 2016-06-22 |  | 0d |  |  | 邓世伟 | 8h |
| 73 | 5.2.2 | Excel实现 | 1d | 2016-06-23 | 2016-06-23 | 72 | 0d |  |  | 邓世伟 | 8h |
| 74 | 5.2.3 | PB Message实现 | 1d | 2016-06-23 | 2016-06-23 | 72 | 0d |  |  | 花成 | 8h |
| 75 | 5.2.4 | Xml实现 | 2d | 2016-06-24 | 2016-06-27 | 74 | 0d |  |  | 花成 | 16h |
| 76 | 5.2.5 | 示例代码编写 | 2d | 2016-06-24 | 2016-06-27 | 73 | 0d |  |  | 邓世伟 | 16h |
| 77 | 5.3 | **联合调试** | 1d | 2016-06-28 | 2016-06-28 | 71 |  |  |  |  | 16h |
| 78 | 5.3.1 | 联合调试 | 1d | 2016-06-28 | 2016-06-28 |  | 0d |  |  | 邓世伟; 花成 | 16h |
| 79 | 5.4 | **验收Review** | 1d | 2016-06-29 | 2016-06-29 | 77 |  |  |  |  | 8h |
| 80 | 5.4.1 | Review | 1d | 2016-06-29 | 2016-06-29 |  | 0d |  |  | 陈明 | 8h |
| 81 | 6 | **常见UI控件封装** | 6d | 2016-06-29 | 2016-07-06 | 67 |  |  |  |  | 72h |
| 82 | 6.1 | **系统设计** | 1d | 2016-06-29 | 2016-06-29 |  |  |  |  |  | 8h |
| 83 | 6.1.1 | 系统框图 | 0.5d | 2016-06-29 | 2016-06-29 |  | 0.5d | 0d |  | 陈明 | 4h |
| 84 | 6.1.2 | 系统设计讨论 | 0.5d | 2016-06-29 | 2016-06-29 | 83 | 128d |  | start no earlier than 2015-07-27 | 陈明 | 4h |
| 85 | 6.2 | **实现** | 2.5d? | 2016-06-30 | 2016-07-04 | 82 | 0.5d |  |  |  | 40h |
| 86 | 6.2.1 | ScrollView控件效率 | 1d? | 2016-06-30 | 2016-06-30 |  | 0.5d | 0d |  | 邓世伟 | 8h |
| 87 | 6.2.2 | 平滑触摸封装 | 1d | 2016-07-01 | 2016-07-01 | 86 | 0.5d | 0d |  | 邓世伟 | 8h |
| 88 | 6.2.3 | 图文聊天框 | 1d | 2016-06-30 | 2016-06-30 |  | 0.5d | 0d |  | 花成 | 8h |
| 89 | 6.2.4 | 其他常用控件封装 | 1d | 2016-07-01 | 2016-07-01 | 88 | 0.5d | 0d |  | 花成 | 8h |
| 90 | 6.2.5 | 示例代码编写 | 0.5d | 2016-07-04 | 2016-07-04 | 87, 89 | 0.5d |  | finish no earlier than 2016-06-27 | 邓世伟; 花成 | 8h |

| ID | WBS | Task | Duration | Start | Finish | Predecessors | Total slack | Free slack | Constraint | Resources | Work |
| --- | --- | --- | --- | --- | --- | --- | --- | --- | --- | --- | --- |
| 91 | 6.3 | **联合调试** | 1d | 2016-07-05 | 2016-07-05 | 85 |  |  |  |  | 16h |
| 92 | 6.3.1 | 联合调试 | 1d | 2016-07-05 | 2016-07-05 |  | 0d |  |  | 邓世伟; 花成 | 16h |
| 93 | 6.4 | **验收Review** | 1d | 2016-07-06 | 2016-07-06 | 91 |  |  |  |  | 8h |
| 94 | 6.4.1 | Review | 1d | 2016-07-06 | 2016-07-06 |  | 0d |  |  | 陈明 | 8h |
| 95 | 7 | **构建优化** | 6d | 2016-07-05 | 2016-07-12 | 81 |  |  |  |  | 48h |
| 96 | 7.1 | **系统设计** | 1d | 2016-07-05 | 2016-07-05 |  |  |  |  |  | 8h |
| 97 | 7.1.1 | 系统框图 | 0.5d | 2016-07-05 | 2016-07-05 |  | 0.5d | 0d |  | 陈明 | 4h |
| 98 | 7.1.2 | 系统设计讨论 | 0.5d | 2016-07-05 | 2016-07-05 | 97 | 124d |  | start no earlier than 2015-07-27 | 陈明 | 4h |
| 99 | 7.2 | **实现** | 4d? | 2016-07-06 | 2016-07-11 | 96 | 0d |  |  |  | 32h |
| 100 | 7.2.1 | 编写示例项目 | 1d? | 2016-07-06 | 2016-07-06 |  | 0d |  |  | 花成 | 8h |
| 101 | 7.2.2 | 代码和资源分离 | 1d | 2016-07-07 | 2016-07-07 | 100 | 0d |  |  | 花成 | 8h |
| 102 | 7.2.3 | 代码版本构建 | 0.5d | 2016-07-08 | 2016-07-08 | 101 | 0d |  |  | 花成 | 4h |
| 103 | 7.2.4 | 资源版本构建 | 0.5d | 2016-07-08 | 2016-07-08 | 102 | 0d |  |  | 花成 | 4h |
| 104 | 7.2.5 | 规范和文档 | 1d | 2016-07-11 | 2016-07-11 | 103 | 0d |  | finish no earlier than 2016-06-27 | 花成 | 8h |
| 105 | 7.3 | **验收Review** | 1d | 2016-07-12 | 2016-07-12 | 99 |  |  |  |  | 8h |
| 106 | 7.3.1 | Review | 1d | 2016-07-12 | 2016-07-12 |  | 0d |  |  | 陈明 | 8h |
| 107 | 8 | **持续集成规范** | 6d | 2016-07-11 | 2016-07-18 | 95 |  |  |  |  | 48h |
| 108 | 8.1 | **系统设计** | 1d | 2016-07-11 | 2016-07-11 |  |  |  |  |  | 8h |
| 109 | 8.1.1 | 系统框图 | 0.5d | 2016-07-11 | 2016-07-11 |  | 0.5d | 0d |  | 陈明 | 4h |
| 110 | 8.1.2 | 系统设计讨论 | 0.5d | 2016-07-11 | 2016-07-11 | 109 | 120d |  | start no earlier than 2015-07-27 | 陈明 | 4h |
| 111 | 8.2 | **实现** | 4d | 2016-07-12 | 2016-07-15 | 108 |  |  |  |  | 32h |
| 112 | 8.2.1 | 项目自动构建 | 1d | 2016-07-12 | 2016-07-12 |  | 1d | 0d |  | 邓世伟 | 8h |
| 113 | 8.2.2 | 逻辑功能自动测试研究 | 1d | 2016-07-13 | 2016-07-13 | 112 | 1d | 0d |  | 邓世伟 | 8h |
| 114 | 8.2.3 | 敏捷开发研究 | 1d | 2016-07-14 | 2016-07-14 | 113 | 1d | 0d |  | 邓世伟 | 8h |
| 115 | 8.2.4 | 规范和文档 | 1d | 2016-07-15 | 2016-07-15 | 114 | 116d |  | finish no earlier than 2016-06-27 | 邓世伟 | 8h |

| ID | WBS | Task | Duration | Start | Finish | Predecessors | Total slack | Free slack | Constraint | Resources | Work |
| --- | --- | --- | --- | --- | --- | --- | --- | --- | --- | --- | --- |
| 116 | 8.3 | **验收Review** | 1d | 2016-07-18 | 2016-07-18 | 111 |  |  |  |  | 8h |
| 117 | 8.3.1 | Review | 1d | 2016-07-18 | 2016-07-18 |  | 0d |  |  | 陈明 | 8h |
| 118 | 9 | **常用插件规范** | 7d | 2016-07-15 | 2016-07-25 | 107 |  |  |  |  | 88h |
| 119 | 9.1 | **系统设计** | 1d | 2016-07-15 | 2016-07-15 |  |  |  |  |  | 8h |
| 120 | 9.1.1 | 插件选择 | 0.5d | 2016-07-15 | 2016-07-15 |  | 0.5d | 0d |  | 陈明 | 4h |
| 121 | 9.1.2 | 讨论 | 0.5d | 2016-07-15 | 2016-07-15 | 120 | 116d |  | start no earlier than 2015-07-27 | 陈明 | 4h |
| 122 | 9.2 | **实现** | 5d? | 2016-07-18 | 2016-07-22 | 119 |  |  |  |  | 72h |
| 123 | 9.2.1 | 塔防插件调研 | 1d? | 2016-07-18 | 2016-07-18 |  | 0d |  |  | 邓世伟 | 8h |
| 124 | 9.2.2 | 策略游戏插件调研 | 1d | 2016-07-19 | 2016-07-19 | 123 | 0d |  |  | 邓世伟 | 8h |
| 125 | 9.2.3 | RGP游戏插件 | 1d | 2016-07-20 | 2016-07-20 | 124 | 0d |  |  | 邓世伟 | 8h |
| 126 | 9.2.4 | 酷跑插件调研 | 1d? | 2016-07-21 | 2016-07-21 | 125 | 0d |  |  | 邓世伟 | 8h |
| 127 | 9.2.5 | 消除类插件调研 | 1d? | 2016-07-22 | 2016-07-22 | 126 | 0d |  |  | 邓世伟 | 8h |
| 128 | 9.2.6 | 场景插件调研 | 1d | 2016-07-18 | 2016-07-18 |  | 112d | 0d | start no earlier than 2016-07-18 | 花成 | 8h |
| 129 | 9.2.7 | 特效插件调研 | 1d | 2016-07-19 | 2016-07-19 | 128 | 112d | 0d | finish no earlier than 2016-06-27 | 花成 | 8h |
| 130 | 9.2.8 | 其他插件调研 | 2d | 2016-07-20 | 2016-07-21 | 129 | 112d |  | finish no earlier than 2016-06-27 | 花成 | 16h |
| 131 | 9.3 | **验收Review** | 1d | 2016-07-25 | 2016-07-25 | 122 |  |  |  |  | 8h |
| 132 | 9.3.1 | Review | 1d | 2016-07-25 | 2016-07-25 |  | 0d |  |  | 陈明 | 8h |
| 133 | 10 | **反外挂相关研究** | 8d | 2016-07-22 | 2016-08-02 | 118 |  |  |  |  | 112h |
| 134 | 10.1 | **系统设计** | 1d | 2016-07-22 | 2016-07-22 |  |  |  |  |  | 8h |
| 135 | 10.1.1 | 插件选择 | 0.5d | 2016-07-22 | 2016-07-22 |  | 0.5d | 0d |  | 陈明 | 4h |
| 136 | 10.1.2 | 讨论 | 0.5d | 2016-07-22 | 2016-07-22 | 135 | 111d |  | start no earlier than 2015-07-27 | 陈明 | 4h |
| 137 | 10.2 | **实现** | 6d | 2016-07-25 | 2016-08-01 | 134 | 0d |  |  |  | 96h |
| 138 | 10.2.1 | C#反编译工具调研 | 2d | 2016-07-25 | 2016-07-26 |  | 2d | 0d |  | 邓世伟 | 16h |
| 139 | 10.2.2 | Java反编译工具调研 | 2d | 2016-07-27 | 2016-07-28 | 138 | 2d |  |  | 邓世伟 | 16h |
| 140 | 10.2.3 | 内存反外挂工具调研 | 2d | 2016-07-25 | 2016-07-26 |  | 0d |  |  | 花成 | 16h |
| 141 | 10.2.4 | 移动反外挂工具调研 | 2d | 2016-07-27 | 2016-07-28 | 140 | 0d |  | finish no earlier than 2016-06-27 | 花成 | 16h |
| 142 | 10.2.5 | 其他相关工具调研 | 1d | 2016-07-29 | 2016-07-29 | 141 | 0d |  | finish no earlier than 2016-06-27 | 邓世伟; 花成 | 16h |
| 143 | 10.2.6 | 规范以及文档 | 1d | 2016-08-01 | 2016-08-01 | 142 | 0d |  | finish no earlier than 2016-06-27 | 邓世伟; 花成 | 16h |

| ID | WBS | Task | Duration | Start | Finish | Predecessors | Total slack | Free slack | Constraint | Resources | Work |
| --- | --- | --- | --- | --- | --- | --- | --- | --- | --- | --- | --- |
| 144 | 10.3 | **验收Review** | 1d | 2016-08-02 | 2016-08-02 | 137 |  |  |  |  | 8h |
| 145 | 10.3.1 | Review | 1d | 2016-08-02 | 2016-08-02 |  | 0d |  |  | 陈明 | 8h |
| 146 | 11 | **兼容性测试相关研究** | 5d | 2016-08-01 | 2016-08-05 | 133 |  |  |  |  | 64h |
| 147 | 11.1 | **系统设计** | 1d | 2016-08-01 | 2016-08-01 |  |  |  |  |  | 8h |
| 148 | 11.1.1 | 插件选择 | 0.5d | 2016-08-01 | 2016-08-01 |  | 0.5d | 0d |  | 陈明 | 4h |
| 149 | 11.1.2 | 讨论 | 0.5d | 2016-08-01 | 2016-08-01 | 148 | 105d |  | start no earlier than 2015-07-27 | 陈明 | 4h |
| 150 | 11.2 | **实现** | 3d | 2016-08-02 | 2016-08-04 | 147 | 0d |  |  |  | 48h |
| 151 | 11.2.1 | Android 自动化测试研究 | 2d | 2016-08-02 | 2016-08-03 |  | 0d |  |  | 邓世伟 | 16h |
| 152 | 11.2.2 | 自动化测试Log收集研究 | 2d | 2016-08-02 | 2016-08-03 |  | 0d |  |  | 花成 | 16h |
| 153 | 11.2.3 | 规范以及文档 | 1d | 2016-08-04 | 2016-08-04 | 151, 152 | 0d |  | finish no earlier than 2016-06-27 | 邓世伟; 花成 | 16h |
| 154 | 11.3 | **验收Review** | 1d | 2016-08-05 | 2016-08-05 | 150 |  |  |  |  | 8h |
| 155 | 11.3.1 | Review | 1d | 2016-08-05 | 2016-08-05 |  | 0d |  |  | 陈明 | 8h |
| 156 | 12 | **美术制作规范** | 11d | 2016-08-04 | 2016-08-18 | 146 |  |  |  |  | 160h |
| 157 | 12.1 | **系统设计** | 1d | 2016-08-04 | 2016-08-04 |  |  |  |  |  | 8h |
| 158 | 12.1.1 | 目标制定 | 0.5d | 2016-08-04 | 2016-08-04 |  | 0.5d | 0d |  | 陈明 | 4h |
| 159 | 12.1.2 | 讨论 | 0.5d | 2016-08-04 | 2016-08-04 | 158 | 102d |  | start no earlier than 2015-07-27 | 陈明 | 4h |
| 160 | 12.2 | **实现** | 9d | 2016-08-05 | 2016-08-17 | 157 |  |  |  |  | 144h |
| 161 | 12.2.1 | 三角形面数dc规范 | 2d | 2016-08-05 | 2016-08-08 |  | 5d | 0d |  | 邓世伟 | 16h |
| 162 | 12.2.2 | 动画规范 | 2d | 2016-08-09 | 2016-08-10 | 161 | 5d | 0d |  | 邓世伟 | 16h |
| 163 | 12.2.3 | 场景规范 | 4d | 2016-08-11 | 2016-08-16 | 162 | 93d | 0d | finish no earlier than 2016-06-27 | 邓世伟 | 32h |
| 164 | 12.2.4 | 特效规范 | 4d | 2016-08-05 | 2016-08-10 |  | 93d | 0d | start no earlier than 2016-08-05 | 花成 | 32h |
| 165 | 12.2.5 | 粒子规范 | 4d | 2016-08-11 | 2016-08-16 | 164 | 93d | 0d | finish no earlier than 2016-06-27 | 花成 | 32h |
| 166 | 12.2.6 | 整体规范和文档 | 1d | 2016-08-17 | 2016-08-17 | 165, 163 | 93d |  | finish no earlier than 2016-06-27 | 邓世伟; 花成 | 16h |
| 167 | 12.3 | **验收Review** | 1d | 2016-08-18 | 2016-08-18 | 160 |  |  |  |  | 8h |
| 168 | 12.3.1 | Review | 1d | 2016-08-18 | 2016-08-18 |  | 0d |  |  | 陈明 | 8h |

| ID | WBS | Task | Duration | Start | Finish | Predecessors | Total slack | Free slack | Constraint | Resources | Work |
| --- | --- | --- | --- | --- | --- | --- | --- | --- | --- | --- | --- |
| 169 | 13 | **游戏通用逻辑** | 18d | 2016-08-17 | 2016-09-09 | 156 |  |  |  |  | 272h |
| 170 | 13.1 | **系统设计** | 1d | 2016-08-17 | 2016-08-17 |  |  |  |  |  | 8h |
| 171 | 13.1.1 | 插件选择 | 0.5d | 2016-08-17 | 2016-08-17 |  | 0.5d | 0d |  | 陈明 | 4h |
| 172 | 13.1.2 | 讨论 | 0.5d | 2016-08-17 | 2016-08-17 | 171 | 93d |  | start no earlier than 2015-07-27 | 陈明 | 4h |
| 173 | 13.2 | **实现** | 16d | 2016-08-18 | 2016-09-08 | 170 |  |  |  |  | 256h |
| 174 | 13.2.1 | 登陆逻辑 | 2d | 2016-08-18 | 2016-08-19 |  | 12d | 0d |  | 邓世伟 | 16h |
| 175 | 13.2.2 | 购买支付逻辑 | 2d | 2016-08-22 | 2016-08-23 | 174 | 12d | 0d |  | 邓世伟 | 16h |
| 176 | 13.2.3 | 好友系统 | 4d | 2016-08-24 | 2016-08-29 | 175 | 77d | 0d | finish no earlier than 2016-06-27 | 邓世伟 | 32h |
| 177 | 13.2.4 | 工会系统 | 4d | 2016-08-30 | 2016-09-02 | 176 | 77d | 0d | finish no earlier than 2016-06-27 | 邓世伟 | 32h |
| 178 | 13.2.5 | 道具系统 | 4d | 2016-09-05 | 2016-09-08 | 177 | 77d |  | finish no earlier than 2016-06-27 | 邓世伟 | 32h |
| 179 | 13.2.6 | 成就系统 | 4d | 2016-08-18 | 2016-08-23 |  | 77d | 0d | start no earlier than 2016-08-18 | 花成 | 32h |
| 180 | 13.2.7 | 商城系统 | 4d | 2016-08-24 | 2016-08-29 | 179 | 77d | 0d | finish no earlier than 2016-06-27 | 花成 | 32h |
| 181 | 13.2.8 | 机能系统 | 4d | 2016-08-30 | 2016-09-02 | 180 | 77d | 0d | finish no earlier than 2016-06-27 | 花成 | 32h |
| 182 | 13.2.9 | 抽奖系统 | 4d | 2016-09-05 | 2016-09-08 | 181 | 77d |  | finish no earlier than 2016-06-27 | 花成 | 32h |
| 183 | 13.3 | **验收Review** | 1d | 2016-09-09 | 2016-09-09 | 173 |  |  |  |  | 8h |
| 184 | 13.3.1 | Review | 1d | 2016-09-09 | 2016-09-09 |  | 0d |  |  | 陈明 | 8h |
| 185 | 14 | **技能编辑器** | 19d | 2016-09-08 | 2016-10-10 | 169 |  |  |  |  | 152h |
| 186 | 14.1 | **系统设计** | 1d | 2016-09-08 | 2016-09-08 |  |  |  |  |  | 8h |
| 187 | 14.1.1 | 系统设计 | 0.5d | 2016-09-08 | 2016-09-08 |  | 0.5d | 0d |  | 陈明 | 4h |
| 188 | 14.1.2 | 讨论 | 0.5d | 2016-09-08 | 2016-09-08 | 187 | 77d |  | start no earlier than 2015-07-27 | 陈明 | 4h |
| 189 | 14.2 | **实现** | 17d | 2016-09-09 | 2016-10-09 | 186 | 0d |  |  |  | 136h |
| 190 | 14.2.1 | 技能底层实现 | 5d | 2016-09-09 | 2016-09-18 |  | 0d |  |  | 邓世伟 | 40h |
| 191 | 14.2.2 | UI交互实现 | 5d | 2016-09-19 | 2016-09-23 | 190 | 0d |  |  | 邓世伟 | 40h |
| 192 | 14.2.3 | 机能脚本编辑 | 5d | 2016-09-26 | 2016-09-30 | 191 | 0d |  | finish no earlier than 2016-06-27 | 邓世伟 | 40h |
| 193 | 14.2.4 | 和游戏对接，文档生成 | 2d | 2016-10-08 | 2016-10-09 | 192 | 0d |  | finish no earlier than 2016-06-27 | 邓世伟 | 16h |

| ID | WBS | Task | Duration | Start | Finish | Predecessors | Total slack | Free slack | Constraint | Resources | Work |
| --- | --- | --- | --- | --- | --- | --- | --- | --- | --- | --- | --- |
| 194 | 14.3 | **验收Review** | 1d | 2016-10-10 | 2016-10-10 | 189 |  |  |  |  | 8h |
| 195 | 14.3.1 | Review | 1d | 2016-10-10 | 2016-10-10 |  | 0d |  |  | 陈明 | 8h |
| 196 | 15 | **特效编辑器** | 19d | 2016-09-08 | 2016-10-10 | 185 |  |  |  |  | 152h |
| 197 | 15.1 | **系统设计** | 1d | 2016-09-08 | 2016-09-08 |  |  |  |  |  | 8h |
| 198 | 15.1.1 | 系统设计 | 0.5d | 2016-09-08 | 2016-09-08 |  | 0.5d | 0d |  | 陈明 | 4h |
| 199 | 15.1.2 | 讨论 | 0.5d | 2016-09-08 | 2016-09-08 | 198 | 77d |  | start no earlier than 2015-07-27 | 陈明 | 4h |
| 200 | 15.2 | **实现** | 17d | 2016-09-09 | 2016-10-09 | 197 | 0d |  |  |  | 136h |
| 201 | 15.2.1 | 特效底层实现 | 5d | 2016-09-09 | 2016-09-18 |  | 0d |  |  | 花成 | 40h |
| 202 | 15.2.2 | UI交互实现 | 5d | 2016-09-19 | 2016-09-23 | 201 | 0d |  |  | 花成 | 40h |
| 203 | 15.2.3 | 特效脚本编辑 | 5d | 2016-09-26 | 2016-09-30 | 202 | 0d |  | finish no earlier than 2016-06-27 | 花成 | 40h |
| 204 | 15.2.4 | 和游戏对接，文档生成 | 2d | 2016-10-08 | 2016-10-09 | 203 | 0d |  | finish no earlier than 2016-06-27 | 花成 | 16h |
| 205 | 15.3 | **验收Review** | 1d | 2016-10-10 | 2016-10-10 | 200 |  |  |  |  | 8h |
| 206 | 15.3.1 | Review | 1d | 2016-10-10 | 2016-10-10 |  | 0d |  |  | 陈明 | 8h |
| 207 | 16 | **场景编辑器** | 18d | 2016-10-09 | 2016-11-01 | 196 |  |  |  |  | 232h |
| 208 | 16.1 | **系统设计** | 1d | 2016-10-09 | 2016-10-09 |  |  |  |  |  | 8h |
| 209 | 16.1.1 | 需求分析系统设计 | 0.5d | 2016-10-09 | 2016-10-09 |  | 0.5d | 0d |  | 陈明 | 4h |
| 210 | 16.1.2 | 讨论 | 0.5d | 2016-10-09 | 2016-10-09 | 209 | 60d |  | start no earlier than 2015-07-27 | 陈明 | 4h |
| 211 | 16.2 | **实现** | 16d | 2016-10-10 | 2016-10-31 | 208 | 0d |  |  |  | 216h |
| 212 | 16.2.1 | 底层实现 | 5d | 2016-10-10 | 2016-10-14 |  | 0d |  |  | 邓世伟 | 40h |
| 213 | 16.2.2 | UI交互实现 | 5d | 2016-10-17 | 2016-10-21 | 212 | 0d |  |  | 邓世伟 | 40h |
| 214 | 16.2.3 | 物件摆放 | 5d | 2016-10-10 | 2016-10-14 |  | 6d | 0d | finish no earlier than 2016-06-27 | 花成 | 40h |
| 215 | 16.2.4 | 画刷Bush | 5d | 2016-10-17 | 2016-10-21 | 214 | 6d |  | finish no earlier than 2016-06-27 | 花成 | 40h |
| 216 | 16.2.5 | 场景光影效果 | 5d | 2016-10-24 | 2016-10-28 | 213 | 0d |  | finish no earlier than 2016-06-27 | 邓世伟 | 40h |
| 217 | 16.2.6 | 和游戏对接，文档生成 | 1d | 2016-10-31 | 2016-10-31 | 216 | 0d |  | finish no earlier than 2016-06-27 | 花成; 邓世伟 | 16h |

| ID | WBS | Task | Duration | Start | Finish | Predecessors | Total slack | Free slack | Constraint | Resources | Work |
| --- | --- | --- | --- | --- | --- | --- | --- | --- | --- | --- | --- |
| 218 | 16.3 | **验收Review** | 1d | 2016-11-01 | 2016-11-01 | 211 |  |  |  |  | 8h |
| 219 | 16.3.1 | Review | 1d | 2016-11-01 | 2016-11-01 |  | 0d |  |  | 陈明 | 8h |
| 220 | 17 | **示范游戏** | 35d | 2016-10-31 | 2016-12-16 | 207 |  |  |  |  | 544h |
| 221 | 17.1 | **系统设计** | 1d | 2016-10-31 | 2016-10-31 |  |  |  |  |  | 8h |
| 222 | 17.1.1 | 示范游戏选择 | 0.5d | 2016-10-31 | 2016-10-31 |  | 0.5d | 0d |  | 陈明 | 4h |
| 223 | 17.1.2 | 讨论 | 0.5d | 2016-10-31 | 2016-10-31 | 222 | 44d |  | start no earlier than 2015-07-27 | 陈明 | 4h |
| 224 | 17.2 | **实现** | 34d | 2016-11-01 | 2016-12-16 | 221 |  |  |  |  | 536h |
| 225 | 17.2.1 | Demo | 10d | 2016-11-01 | 2016-11-14 |  | 0d |  |  | 邓世伟; 花成 | 160h |
| 226 | 17.2.2 | **Demo验收Review** | 1d | 2016-11-15 | 2016-11-15 | 225 |  |  |  |  | 8h |
| 227 | 17.2.2.1 | Review | 1d | 2016-11-15 | 2016-11-15 |  | 0d |  |  | 陈明 | 8h |
| 228 | 17.2.3 | 主流程 | 15d | 2016-11-15 | 2016-12-05 | 225 | 0d |  | start no earlier than 2016-11-09 | 花成; 邓世伟 | 240h |
| 229 | 17.2.4 | **第一个可玩版本验收Review** | 1d | 2016-12-06 | 2016-12-06 | 228 |  |  |  |  | 8h |
| 230 | 17.2.4.1 | Review | 1d | 2016-12-06 | 2016-12-06 |  | 0d |  |  | 陈明 | 8h |
| 231 | 17.2.5 | 好友系统 | 2d | 2016-12-06 | 2016-12-07 | 228 | 2d | 0d | finish no earlier than 2016-06-27 | 邓世伟 | 16h |
| 232 | 17.2.6 | 工会系统 | 2d | 2016-12-08 | 2016-12-09 | 231 | 2d | 0d | finish no earlier than 2016-06-27 | 邓世伟 | 16h |
| 233 | 17.2.7 | 道具系统 | 2d | 2016-12-12 | 2016-12-13 | 232 | 2d |  | finish no earlier than 2016-06-27 | 邓世伟 | 16h |
| 234 | 17.2.8 | 成就系统 | 2d | 2016-12-06 | 2016-12-07 | 228 | 0d |  | finish no earlier than 2016-06-27 | 花成 | 16h |
| 235 | 17.2.9 | 商城系统 | 2d | 2016-12-08 | 2016-12-09 | 234 | 0d |  | finish no earlier than 2016-06-27 | 花成 | 16h |
| 236 | 17.2.10 | 机能系统 | 2d | 2016-12-12 | 2016-12-13 | 235 | 0d |  | finish no earlier than 2016-06-27 | 花成 | 16h |
| 237 | 17.2.11 | 抽奖系统 | 2d | 2016-12-14 | 2016-12-15 | 236 | 0d |  | finish no earlier than 2016-06-27 | 花成 | 16h |
| 238 | 17.2.12 | **内测验收Review** | 1d | 2016-12-16 | 2016-12-16 | 237, 233 |  |  |  |  | 8h |
| 239 | 17.2.12.1 | Review | 1d | 2016-12-16 | 2016-12-16 |  | 0d |  |  | 陈明 | 8h |
| 240 | 18 | **性能测试工具** | 12d | 2016-12-15 | 2016-12-30 | 220 |  |  |  |  | 160h |
| 241 | 18.1 | **系统设计** | 1d | 2016-12-15 | 2016-12-15 |  |  |  |  |  | 8h |
| 242 | 18.1.1 | 需求分析系统设计 | 0.5d | 2016-12-15 | 2016-12-15 |  | 0.5d | 0d |  | 陈明 | 4h |
| 243 | 18.1.2 | 讨论 | 0.5d | 2016-12-15 | 2016-12-15 | 242 | 11d |  | start no earlier than 2015-07-27 | 陈明 | 4h |

| ID | WBS | Task | Duration | Start | Finish | Predecessors | Total slack | Free slack | Constraint | Resources | Work |
| --- | --- | --- | --- | --- | --- | --- | --- | --- | --- | --- | --- |
| 244 | 18.2 | **实现** | 10d | 2016-12-16 | 2016-12-29 | 241 | 0d |  |  |  | 144h |
| 245 | 18.2.1 | C#函数Profiler研究 | 2d | 2016-12-16 | 2016-12-19 |  | 0d |  |  | 邓世伟 | 16h |
| 246 | 18.2.2 | lua函数profiler研究 | 2d | 2016-12-20 | 2016-12-21 | 245 | 0d |  |  | 邓世伟 | 16h |
| 247 | 18.2.3 | 平台原生语言Profiler研究 | 2d | 2016-12-16 | 2016-12-19 |  | 6d | 0d | finish no earlier than 2016-06-27 | 花成 | 16h |
| 248 | 18.2.4 | Cpu瓶颈查找研究 | 2d | 2016-12-20 | 2016-12-21 | 247 | 6d |  | finish no earlier than 2016-06-27 | 花成 | 16h |
| 249 | 18.2.5 | GPU瓶颈查找研究 | 2d | 2016-12-22 | 2016-12-23 | 246 | 0d |  | finish no earlier than 2016-06-27 | 邓世伟 | 16h |
| 250 | 18.2.6 | 内存占用及其优化研究 | 2d | 2016-12-26 | 2016-12-27 | 249 | 0d |  | finish no earlier than 2016-06-27 | 花成; 邓世伟 | 32h |
| 251 | 18.2.7 | 相关文档 | 2d | 2016-12-28 | 2016-12-29 | 250 | 0d |  | finish no earlier than 2016-06-27 | 花成; 邓世伟 | 32h |
| 252 | 18.3 | **验收Review** | 1d | 2016-12-30 | 2016-12-30 | 244 |  |  |  |  | 8h |
| 253 | 18.3.1 | Review | 1d | 2016-12-30 | 2016-12-30 |  | 0d |  |  | 陈明 | 8h |
| 254 | 19 | SDK1.2版本 | 25d? | 2016-04-18 | 2016-05-20 |  | 0d |  | start no earlier than 2016-04-18 |  |  |
| 255 | 20 | **SDK1.2.x版本** | 15d | 2016-05-23 | 2016-06-12 | 254 |  |  |  |  | 192h |
| 256 | 20.1 | **实现** | 14d | 2016-05-23 | 2016-06-10 |  |  |  |  |  | 176h |
| 257 | 20.1.1 | 卡顿解决 | 2d | 2016-05-23 | 2016-05-24 |  | 2d | 0d |  | 郁江 | 16h |
| 258 | 20.1.2 | 闪退解决 | 1d | 2016-05-25 | 2016-05-25 | 257 | 2d | 0d |  | 郁江 | 8h |
| 259 | 20.1.3 | 多语言代码抽象 | 1d | 2016-05-26 | 2016-05-26 | 258 | 2d | 0d |  | 郁江 | 8h |
| 260 | 20.1.4 | Twitter接入文档 | 1d | 2016-05-27 | 2016-05-27 | 259 | 2d | 0d |  | 郁江 | 8h |
| 261 | 20.1.5 | HTML页面优化 | 2d | 2016-05-30 | 2016-05-31 | 260 | 2d | 0d |  | 郁江 | 16h |
| 262 | 20.1.6 | HTML打包进底层 | 2d | 2016-06-01 | 2016-06-02 | 261 | 2d | 0d |  | 郁江 | 16h |
| 263 | 20.1.7 | MI接入问题解决 | 3d | 2016-06-03 | 2016-06-07 | 262 | 2d |  |  | 郁江 | 24h |
| 264 | 20.1.8 | 登陆界面不显示 | 2d | 2016-05-23 | 2016-05-24 |  | 4d | 0d |  | 徐艳玲 | 16h |
| 265 | 20.1.9 | 环境搭建 | 2d | 2016-05-25 | 2016-05-26 | 264 | 4d | 0d |  | 徐艳玲 | 16h |
| 266 | 20.1.10 | 默认游客登陆 | 2d | 2016-05-27 | 2016-05-30 | 265 | 4d | 0d |  | 徐艳玲 | 16h |
| 267 | 20.1.11 | 注销不销毁用户信息 | 2d | 2016-05-31 | 2016-06-01 | 266 | 4d | 0d |  | 徐艳玲 | 16h |
| 268 | 20.1.12 | U3D封装 | 2d | 2016-06-02 | 2016-06-03 | 267 | 4d |  |  | 徐艳玲 | 16h |

| ID | WBS | Task | Duration | Start | Finish | Predecessors | Total slack | Free slack | Constraint | Resources | Work |
| --- | --- | --- | --- | --- | --- | --- | --- | --- | --- | --- | --- |
| 269 | 20.2 | **版本提交测试** | 1d | 2016-06-12 | 2016-06-12 | 256 |  |  |  |  | 16h |
| 270 | 20.2.1 | Review | 1d | 2016-06-12 | 2016-06-12 |  | 141d |  | start no earlier than 2016-06-12 | 陈明; 郁江 | 16h |
| 271 | 21 | **SDK1.3版本** | 14d | 2016-06-12 | 2016-06-29 | 255 |  |  |  |  | 256h |
| 272 | 21.1 | **需求分析** | 2d | 2016-06-12 | 2016-06-13 |  |  |  |  |  | 32h |
| 273 | 21.1.1 | 需求分析会 | 1d | 2016-06-12 | 2016-06-12 |  | 1d | 0d |  | 郁江; 陈明 | 16h |
| 274 | 21.1.2 | 设计实现会 | 1d | 2016-06-13 | 2016-06-13 | 273 | 140d |  | start no earlier than 2015-07-27 | 郁江; 陈明 | 16h |
| 275 | 21.2 | **实现** | 9d | 2016-06-14 | 2016-06-24 | 272 |  |  |  |  | 184h |
| 276 | 21.2.1 | 乐视手机上系统状态栏收回去时UI未刷新进行全屏显示 | 1d | 2016-06-14 | 2016-06-14 |  | 1d | 0d |  | 郁江 | 8h |
| 277 | 21.2.2 | 手机注册登陆 | 1d | 2016-06-15 | 2016-06-15 | 276 | 1d | 0d |  | 郁江 | 8h |
| 278 | 21.2.3 | 开发者模式的逻辑 | 2d | 2016-06-16 | 2016-06-17 | 277 | 1d | 0d |  | 郁江 | 16h |
| 279 | 21.2.4 | Android 多线程开发 | 2d | 2016-06-20 | 2016-06-21 | 278 | 1d | 0d |  | 郁江 | 16h |
| 280 | 21.2.5 | iOS 多线程开发 | 2d | 2016-06-22 | 2016-06-23 | 279 | 1d |  |  | 郁江 | 16h |
| 281 | 21.2.6 | 用户协议 | 1d | 2016-06-14 | 2016-06-14 |  | 2d | 0d |  | 徐艳玲 | 8h |
| 282 | 21.2.7 | 删除游客之前提示 | 1d | 2016-06-15 | 2016-06-15 | 281 | 2d | 0d |  | 徐艳玲 | 8h |
| 283 | 21.2.8 | 数据采集接口变更 | 1d | 2016-06-16 | 2016-06-16 | 282 | 2d | 0d |  | 徐艳玲 | 8h |
| 284 | 21.2.9 | 数据采集校验的逻辑开发 | 1d | 2016-06-17 | 2016-06-17 | 283 | 2d | 0d |  | 徐艳玲 | 8h |
| 285 | 21.2.10 | 数据采集接口变更文档 | 1d | 2016-06-20 | 2016-06-20 | 284 | 2d | 0d |  | 徐艳玲 | 8h |
| 286 | 21.2.11 | 数据采集示例代码 | 1d | 2016-06-21 | 2016-06-21 | 285 | 2d | 0d |  | 徐艳玲 | 8h |
| 287 | 21.2.12 | 所有被调用的API及回调都输出打印信息 | 1d | 2016-06-22 | 2016-06-22 | 286 | 2d |  |  | 徐艳玲 | 8h |
| 288 | 21.2.13 | **版本自动化构建** | 4d | 2016-06-14 | 2016-06-17 |  | 5d |  |  | 陆坚 | 64h |
| 289 | 21.2.13.1 | SDK自动化构建 | 1d | 2016-06-14 | 2016-06-14 |  | 5d | 0d |  | 陆坚 | 8h |
| 290 | 21.2.13.2 | 原生Demo自动化构建 | 1d | 2016-06-15 | 2016-06-15 | 289 | 5d | 0d |  | 陆坚 | 8h |
| 291 | 21.2.13.3 | U3DDemo自动构建 | 1d | 2016-06-16 | 2016-06-16 | 290 | 5d | 0d |  | 陆坚 | 8h |
| 292 | 21.2.13.4 | Cocos2dx自动构建 | 1d | 2016-06-17 | 2016-06-17 | 291 | 5d |  |  | 陆坚 | 8h |

| ID | WBS | Task | Type | Duration | Start | Finish | Predecessors | Total slack | Free slack | Constraint | Resources | Work |
| --- | --- | --- | --- | --- | --- | --- | --- | --- | --- | --- | --- | --- |
| 293 | 21.3 | **版本提交测试** |  | 3d | 2016-06-27 | 2016-06-29 | 275 |  |  |  |  | 40h |
| 294 | 21.3.1 | Bug Fix |  | 1d | 2016-06-27 | 2016-06-27 |  | 2d |  |  | 陈明; 郁江 | 16h |
| 295 | 21.3.2 | 版本回归 |  | 1d | 2016-06-27 | 2016-06-27 |  | 1.5d | 0d |  | 陈明; 郁江 | 16h |
| 296 | 21.3.3 | Review |  | 0.5d | 2016-06-28 | 2016-06-28 | 295 | 1.5d |  |  | 陈明; 郁江 | 8h |
| 297 | 22 | **SDK1.4版本** |  | 15d | 2016-06-23 | 2016-07-13 | 271 |  |  |  |  | 176h |
| 298 | 22.1 | **需求分析** |  | 2d | 2016-06-23 | 2016-06-24 |  |  |  |  |  | 32h |
| 299 | 22.1.1 | 设计实现会 |  | 1d | 2016-06-23 | 2016-06-23 |  | 1d | 0d |  | 郁江; 陈明 | 16h |
| 300 | 22.2 | **实现** |  | 10d | 2016-06-27 | 2016-07-08 | 298 |  |  |  |  | 104h |
| 301 | 22.2.1 | 修改联系客服界面，fix bug 及增加邮箱信息提示 |  | 1d | 2016-06-27 | 2016-06-27 |  | 0d |  |  | 徐艳玲 | 8h |
| 302 | 22.2.2 | 增加设备本地游客信息被替换时的提示信息UI |  | 1d | 2016-06-28 | 2016-06-28 | 301 | 0d |  |  | 徐艳玲 | 8h |
| 303 | 22.2.3 | 增加用户信息采集时的信息提示UI |  | 1d | 2016-06-29 | 2016-06-29 | 302 | 0d |  |  | 徐艳玲 | 8h |
| 304 | 22.2.4 | 登陆，注册UI整体替换 |  | 1d | 2016-06-30 | 2016-06-30 | 303 | 0d |  |  | 徐艳玲 | 8h |
| 305 | 22.2.5 | 用户账号升级逻辑及UI |  | 1d | 2016-07-01 | 2016-07-01 | 304 | 0d |  |  | 徐艳玲 | 8h |
| 306 | 22.2.6 | 用户修改密码UI替换 |  | 1d | 2016-07-04 | 2016-07-04 | 305 | 0d |  |  | 徐艳玲 | 8h |
| 307 | 22.2.7 | 绑定手机号UI修改及替换 |  | 1d | 2016-07-05 | 2016-07-05 | 306 | 0d |  |  | 徐艳玲 | 8h |
| 308 | 22.2.8 | 第三方绑定UI修改（加twitter）及替换 |  | 1d | 2016-07-06 | 2016-07-06 | 307 | 0d |  |  | 徐艳玲 | 8h |
| 309 | 22.2.9 | 绑定邮箱逻辑及UI替换 |  | 1d | 2016-07-07 | 2016-07-07 | 308 | 0d |  |  | 徐艳玲 | 8h |
| 310 | 22.2.10 | 开发者调试的UI |  | 1d | 2016-07-08 | 2016-07-08 | 309 | 0d |  |  | 徐艳玲 | 8h |
| 311 | 22.2.11 | 关于逻辑及各种配置的QA自动化测试校验脚本 |  | 3d | 2016-06-27 | 2016-06-29 |  | 7d |  |  | 郁江 | 24h |
| 312 | 22.3 | **版本提交测试** |  | 3d | 2016-07-11 | 2016-07-13 | 300 |  |  |  |  | 40h |
| 313 | 22.3.1 | Bug Fix |  | 1d | 2016-07-11 | 2016-07-11 |  | 2d |  |  | 陈明; 郁江 | 16h |
| 314 | 22.3.2 | 版本回归 |  | 1d | 2016-07-11 | 2016-07-11 |  | 1.5d | 0d |  | 陈明; 郁江 | 16h |
| 315 | 22.3.3 | Review |  | 0.5d | 2016-07-12 | 2016-07-12 | 314 | 1.5d |  |  | 陈明; 郁江 | 8h |
| 316 | 23 | **SDK1.5版本** |  | 15d | 2016-07-07 | 2016-07-27 | 297 |  |  |  |  | 72h |
| 317 | 23.1 | **需求分析** |  | 2d | 2016-07-07 | 2016-07-08 |  |  |  |  |  | 32h |
| 318 | 23.1.1 | 需求分析会 |  | 1d | 2016-07-07 | 2016-07-07 |  | 1d | 0d |  | 郁江; 陈明 | 16h |
| 319 | 23.1.2 | 设计实现会 |  | 1d | 2016-07-08 | 2016-07-08 | 318 | 121d |  | start no earlier than 2015-07-27 | 郁江; 陈明 | 16h |
| 320 | 23.2 | 实现 | manual | 10d | 2016-07-11 | 2016-07-22 | 317 |  |  |  |  |  |

| ID | WBS | Task | Type | Duration | Start | Finish | Predecessors | Total slack | Free slack | Constraint | Resources | Work |
| --- | --- | --- | --- | --- | --- | --- | --- | --- | --- | --- | --- | --- |
| 321 | 23.3 | **版本提交测试** |  | 3d | 2016-07-25 | 2016-07-27 | 320 |  |  |  |  | 40h |
| 322 | 23.3.1 | Bug Fix |  | 1d | 2016-07-25 | 2016-07-25 |  | 2d |  |  | 陈明; 郁江 | 16h |
| 323 | 23.3.2 | 版本回归 |  | 1d | 2016-07-25 | 2016-07-25 |  | 1.5d | 0d |  | 陈明; 郁江 | 16h |
| 324 | 23.3.3 | Review |  | 0.5d | 2016-07-26 | 2016-07-26 | 323 | 1.5d |  |  | 陈明; 郁江 | 8h |
| 325 | 24 | **SDK1.6版本** |  | 15d | 2016-07-21 | 2016-08-10 | 316 |  |  |  |  | 72h |
| 326 | 24.1 | **需求分析** |  | 2d | 2016-07-21 | 2016-07-22 |  |  |  |  |  | 32h |
| 327 | 24.1.1 | 需求分析会 |  | 1d | 2016-07-21 | 2016-07-21 |  | 1d | 0d |  | 郁江; 陈明 | 16h |
| 328 | 24.1.2 | 设计实现会 |  | 1d | 2016-07-22 | 2016-07-22 | 327 | 111d |  | start no earlier than 2015-07-27 | 郁江; 陈明 | 16h |
| 329 | 24.2 | 实现 | manual | 10d | 2016-07-25 | 2016-08-05 | 326 |  |  |  |  |  |
| 330 | 24.3 | **版本提交测试** |  | 3d | 2016-08-08 | 2016-08-10 | 329 |  |  |  |  | 40h |
| 331 | 24.3.1 | Bug Fix |  | 1d | 2016-08-08 | 2016-08-08 |  | 2d |  |  | 陈明; 郁江 | 16h |
| 332 | 24.3.2 | 版本回归 |  | 1d | 2016-08-08 | 2016-08-08 |  | 1.5d | 0d |  | 陈明; 郁江 | 16h |
| 333 | 24.3.3 | Review |  | 0.5d | 2016-08-09 | 2016-08-09 | 332 | 1.5d |  |  | 陈明; 郁江 | 8h |
| 334 | 25 | **SDK1.7版本** |  | 14d | 2016-08-04 | 2016-08-23 | 325 |  |  |  |  | 72h |
| 335 | 25.1 | **需求分析** |  | 2d | 2016-08-04 | 2016-08-05 |  |  |  |  |  | 32h |
| 336 | 25.1.1 | 需求分析会 |  | 1d | 2016-08-04 | 2016-08-04 |  | 1d | 0d |  | 郁江; 陈明 | 16h |
| 337 | 25.1.2 | 设计实现会 |  | 1d | 2016-08-05 | 2016-08-05 | 336 | 101d |  | start no earlier than 2015-07-27 | 郁江; 陈明 | 16h |
| 338 | 25.2 | 实现 | manual | 10d | 2016-08-08 | 2016-08-19 | 335 |  |  |  |  |  |
| 339 | 25.3 | **版本提交测试** |  | 2d | 2016-08-22 | 2016-08-23 | 338 |  |  |  |  | 40h |
| 340 | 25.3.1 | Bug Fix |  | 1d | 2016-08-22 | 2016-08-22 |  | 1d |  |  | 陈明; 郁江 | 16h |
| 341 | 25.3.2 | 版本回归 |  | 1d | 2016-08-22 | 2016-08-22 |  | 0.5d | 0d |  | 陈明; 郁江 | 16h |
| 342 | 25.3.3 | Review |  | 0.5d | 2016-08-23 | 2016-08-23 | 341 | 0.5d |  |  | 陈明; 郁江 | 8h |
| 343 | 26 | 关于逻辑及各种配置的QA自动化测试校验脚本 | manual | 3d | 2016-06-20 | 2016-06-22 |  |  |  |  | 郁江 | 24h |
| 344 | 27 | 新的跨平台方案调研(React Native) | manual | 5d | 2016-06-27 | 2016-07-01 |  |  |  |  | 郁江 | 40h |
